# planingIni

Schedule from MS Project, 2018-05-15 to 2018-06-12, A marks actual dates.
CPNV

## Calendars

- Standard: Mon off; Tue 10:40-12:15, 13:30-15:05, 15:20-16:05; Wed-Thu 08:00-09:35, 09:50-12:15, 13:30-15:05, 15:20-16:55; Fri 08:00-09:35, 09:50-12:15, 13:30-15:05; Sat-Sun off.

## Schedule

| ID | WBS | Task | Type | Duration | Start | Finish | Predecessors | Complete |
| --- | --- | --- | --- | --- | --- | --- | --- | --- |
| 1 | 1 | Début | milestone, manual | 0d | 2018-05-15 09:00 | 2018-05-15 09:00 |  |  |
| 2 | 2 | **Analyse** |  | 2.5d | 2018-05-15 10:40 A | 2018-05-18 10:00 A | 1 | 100% |
| 3 | 2.1 | Planification initiale |  | 2h | 2018-05-15 10:40 A | 2018-05-15 13:55 A | 1 | 100% |
| 4 | 2.2 | Documentation (introduction) |  | 3h | 2018-05-15 12:10 A | 2018-05-16 08:35 A | 3 | 100% |
| 5 | 2.3 | Analyse du CDC |  | 2h | 2018-05-16 08:35 A | 2018-05-16 10:50 A | 4 | 100% |
| 6 | 2.4 | Stratégie de test |  | 2h | 2018-05-16 10:50 A | 2018-05-16 14:05 A | 5 | 100% |
| 7 | 2.5 | **Concpetion** |  | 1.06d | 2018-05-16 13:35 A | 2018-05-17 14:55 A | 6 | 100% |
| 8 | 2.5.1 | diagramme code Arduino |  | 2.5h | 2018-05-16 13:35 A | 2018-05-16 16:20 A | 6 | 100% |
| 9 | 2.5.2 | Diagramme de code Application |  | 2.5h | 2018-05-16 16:50 A | 2018-05-17 10:40 A | 8 | 100% |
| 10 | 2.5.3 | Schéma montage Arduino |  | 1.5h | 2018-05-17 12:10 A | 2018-05-17 14:55 A | 9 | 100% |
| 11 | 2.6 | Rédaction Documentation |  | 3h | 2018-05-17 15:40 A | 2018-05-18 10:00 A | 7 | 100% |
| 12 | 3 | **Implémentation** |  | 5.75d | 2018-05-18 10:00 A | 2018-06-01 08:05 A | 2 | 100% |
| 13 | 3.1 | **Recherches Skype** |  | 1.62d | 2018-05-18 10:00 A | 2018-05-23 14:45 A | 11 | 100% |
| 14 | 3.1.1 | Recherches API Skype |  | 3.5h | 2018-05-18 10:00 A | 2018-05-18 14:45 A | 11 | 100% |
| 15 | 3.1.2 | Recherches API Skype for business |  | 3.5h | 2018-05-18 14:45 A | 2018-05-22 15:05 A | 14 | 100% |
| 16 | 3.1.3 | Installation Skype for business |  | 4h | 2018-05-22 10:50 A | 2018-05-23 08:15 A | 15 | 100% |
| 17 | 3.1.4 | Installation SDK |  | 2h | 2018-05-23 08:15 A | 2018-05-23 10:30 A | 16 | 100% |
| 18 | 3.1.5 | Recherche récupèrer statut Skype |  | 2h | 2018-05-23 11:30 A | 2018-05-23 14:45 A | 17 | 100% |
| 19 | 3.2 | Assemblage Arduino |  | 3h | 2018-05-24 11:20 A | 2018-05-24 15:50 A | 13 | 100% |
| 20 | 3.3 | **Code Arduino** |  | 1d | 2018-05-24 15:50 A | 2018-05-29 12:00 A | 19 | 100% |
| 21 | 3.3.1 | Communication |  | 2.5h | 2018-05-24 15:50 A | 2018-05-25 09:25 A | 19 | 100% |
| 22 | 3.3.2 | LED |  | 2h | 2018-05-25 09:25 A | 2018-05-25 11:40 A | 21 | 100% |
| 23 | 3.3.3 | Divers |  | 3.5h | 2018-05-25 11:40 A | 2018-05-29 12:00 A | 22 | 100% |
| 24 | 3.4 | **Code application** |  | 1.81d | 2018-05-29 12:00 A | 2018-05-31 14:15 A | 20 | 100% |
| 25 | 3.4.1 | Divers |  | 2.5h | 2018-05-29 12:00 A | 2018-05-29 16:00 A | 20 | 100% |
| 26 | 3.4.2 | UI |  | 4h | 2018-05-29 16:00 A | 2018-05-30 12:10 A | 25 | 100% |
| 27 | 3.4.3 | Communication |  | 4h | 2018-05-30 12:10 A | 2018-05-31 08:45 A | 26 | 100% |
| 28 | 3.4.4 | Gestion erreurs |  | 4h | 2018-05-31 08:45 A | 2018-05-31 14:15 A | 27 | 100% |
| 29 | 3.5 | Test relation Arduino-Application |  | 1.5h | 2018-05-31 14:15 A | 2018-05-31 16:00 A | 24 | 100% |

| ID | WBS | Task | Type | Duration | Start | Finish | Predecessors | Complete |
| --- | --- | --- | --- | --- | --- | --- | --- | --- |
| 30 | 3.6 | **Corrections** |  | 1.38d | 2018-05-30 11:40 A | 2018-06-01 08:05 A | 24 | 100% |
| 31 | 3.6.1 | **Code Skype** |  | 1.38d | 2018-05-30 11:40 A | 2018-06-01 08:05 A | 24 | 100% |
| 32 | 3.6.1.1 | Connexion |  | 2.5h | 2018-05-30 11:40 A | 2018-05-30 15:40 A | 24 | 100% |
| 33 | 3.6.1.2 | Récupèration statut |  | 2h | 2018-05-30 16:10 A | 2018-05-31 09:15 A | 32 | 100% |
| 34 | 3.6.1.3 | Changement statut |  | 2h | 2018-05-31 09:15 A | 2018-05-31 11:30 A | 33 | 100% |
| 35 | 3.6.1.4 | Test Skype |  | 2h | 2018-05-31 11:30 A | 2018-05-31 14:45 A | 34 | 100% |
| 36 | 3.6.1.5 | Debug Skype |  | 4h | 2018-05-31 11:30 A | 2018-06-01 08:05 A | 35 | 100% |
| 37 | 4 | **Tests et corrections** |  | 0.5d | 2018-06-01 08:05 A | 2018-06-01 13:35 A | 12 | 100% |
| 38 | 4.1 | Tests complets |  | 3h | 2018-06-01 08:05 A | 2018-06-01 11:20 A | 12 | 100% |
| 39 | 4.2 | Documentation (tests) |  | 1h | 2018-06-01 11:20 A | 2018-06-01 13:35 A | 38 | 100% |
| 40 | 5 | Documentation (fin rédaction) |  | 4h | 2018-06-01 13:35 A | 2018-06-05 14:25 A | 39 | 100% |
| 41 | 6 | Documentation (finalisation) |  | 2h | 2018-06-05 14:25 A | 2018-06-06 08:35 A | 40 | 100% |
| 42 | 7 | Fin | milestone, manual | 0d | 2018-06-12 09:00 A | 2018-06-12 09:00 A |  | 100% |
